# Sistema de Reserva para Oposiciones

Schedule from MS Project, 2024-10-02 to 2024-12-20, status date 2024-11-01, costs in €, A marks actual dates.

## Calendars

- Calendario-Sevilla: Mon-Fri 09:00-13:00, 15:00-19:00; Sat-Sun off. Exceptions (off unless hours are given): 2024-11-01 (Festividad Todos los Santos), 2024-12-06 (Festividad Día de la constitución), 2024-12-09 (Festividad Inmaculada Concepción).

## Resources

| Resource | Rate |
| --- | --- |
| Jefe de proyecto | 53 |
| Desarrollador full stack - 1 | 31 |
| Desarrollador full stack - 2 | 31 |
| Desarrollador full stack - 3 | 31 |
| Administrador de bases de datos | 40 |
| Especialista en pruebas - 1 | 26 |
| Costes de la Organización |  |
| Reservas de contingencia |  |
| Reservas de gestión |  |

## Schedule

| ID | WBS | Task | Type | Duration | Start | Finish | Predecessors | Complete | Remaining | Total slack | Constraint | Resources | Work | Actual work | Cost | Actual cost |
| --- | --- | --- | --- | --- | --- | --- | --- | --- | --- | --- | --- | --- | --- | --- | --- | --- |
| 1 | 1 | **Proyecto** |  | 55d? | 2024-10-02 A | 2024-12-20 |  | 22% | 42.67d? |  |  | Costes de la Organización [0.1%]; Reservas de contingencia [0.1%]; Reservas de gestión [0.1%]; Jefe de proyecto [50%] | 473h | 61h | 21,989 | 1,144 |
| 2 | 1.1 | Inicio del proyecto | milestone | 0d | 2024-10-02 A | 2024-10-02 A |  | 100% |  |  |  |  |  |  |  |  |
| 3 | 1.2 | **Inicio** |  | 6d | 2024-10-02 A | 2024-10-09 A |  | 100% |  |  |  |  | 18h | 18h |  |  |
| 4 | 1.2.1 | **Documentos iniciales** |  | 6d | 2024-10-02 A | 2024-10-09 A |  | 100% |  |  |  |  | 18h | 18h |  |  |
| 5 | 1.2.1.1 | Documentación inicial |  | 6d | 2024-10-02 A | 2024-10-09 A | 2 | 100% |  |  |  |  | 18h | 18h |  |  |
| 6 | 1.2.1.2 | Acta de constitución | milestone | 0d | 2024-10-09 A | 2024-10-09 A |  | 100% |  |  | finish no earlier than 2024-10-09 |  |  |  |  |  |
| 7 | 1.2.1.3 | Registro de supuestos | milestone | 0d | 2024-10-09 A | 2024-10-09 A |  | 100% |  |  | finish no earlier than 2024-10-09 |  |  |  |  |  |
| 8 | 1.2.1.4 | Registro de interesados | milestone | 0d | 2024-10-09 A | 2024-10-09 A |  | 100% |  |  | finish no earlier than 2024-10-09 |  |  |  |  |  |
| 9 | 1.3 | **Planificación** |  | 21d? | 2024-10-10 A | 2024-11-08 |  | 89% | 2.4d? |  |  |  | 47h | 43h | 1,268 | 1,144 |
| 10 | 1.3.1 | **Documentos de gestión** |  | 19d | 2024-10-10 A | 2024-11-06 |  | 99% | 0d |  |  |  | 21h | 21h |  |  |
| 11 | 1.3.1.1 | Documentación del alcance |  | 15d | 2024-10-10 A | 2024-10-30 A | 5 | 100% |  |  | start no earlier than 2024-10-10 |  | 21h | 21h |  |  |
| 12 | 1.3.1.2 | Iniciar plan de dirección del proyecto | milestone | 0d | 2024-10-16 A | 2024-10-16 A |  | 100% |  |  | start no earlier than 2024-10-16 |  |  |  |  |  |
| 13 | 1.3.1.3 | Plan de gestión de comunicaciones | milestone | 0d | 2024-10-16 A | 2024-10-16 A |  | 100% |  |  | start no earlier than 2024-10-16 |  |  |  |  |  |
| 14 | 1.3.1.4 | Plan de gestión de requisitos | milestone | 0d | 2024-10-16 A | 2024-10-16 A |  | 100% |  |  | start no earlier than 2024-10-16 |  |  |  |  |  |
| 15 | 1.3.1.5 | Plan de gestión del alcance | milestone | 0d | 2024-10-23 A | 2024-10-23 A |  | 100% |  |  | start no earlier than 2024-10-23 |  |  |  |  |  |
| 16 | 1.3.1.6 | Enunciado del alcance | milestone | 0d | 2024-10-23 A | 2024-10-23 A |  | 100% |  |  | start no earlier than 2024-10-23 |  |  |  |  |  |
| 17 | 1.3.1.7 | Plan de gestión de la calidad | milestone | 0d | 2024-10-30 A | 2024-10-30 A |  | 100% |  |  | start no earlier than 2024-10-30 |  |  |  |  |  |
| 18 | 1.3.1.8 | Plan de gestión de riesgos | milestone | 0d | 2024-10-30 A | 2024-10-30 A |  | 100% |  |  | start no earlier than 2024-10-30 |  |  |  |  |  |
| 19 | 1.3.1.9 | Plan de gestión del cronograma | milestone | 0d | 2024-10-30 A | 2024-10-30 A |  | 100% |  |  | start no earlier than 2024-10-30 |  |  |  |  |  |
| 20 | 1.3.1.10 | Plan de gestión de recursos | milestone | 0d | 2024-11-06 | 2024-11-06 |  |  |  | 31d | start no earlier than 2024-11-06 |  |  |  |  |  |
| 21 | 1.3.1.11 | Plan de gestión de adquisiciones | milestone | 0d | 2024-11-06 | 2024-11-06 |  |  |  | 31d | start no earlier than 2024-11-06 |  |  |  |  |  |
| 22 | 1.3.1.12 | Plan de gestión de costes | milestone | 0d | 2024-11-06 | 2024-11-06 |  |  |  | 31d | start no earlier than 2024-11-06 |  |  |  |  |  |
| 23 | 1.3.1.13 | Plan de gestión de cambios | milestone | 0d | 2024-11-06 | 2024-11-06 |  |  |  | 31d | start no earlier than 2024-11-06 |  |  |  |  |  |
| 24 | 1.3.1.14 | Plan de gestión de la configuración | milestone | 0d | 2024-11-06 | 2024-11-06 |  |  |  | 31d | start no earlier than 2024-11-06 |  |  |  |  |  |
| 25 | 1.3.1.15 | Cerrar el plan de dirección de proyecto | milestone | 0d | 2024-11-06 | 2024-11-06 |  |  |  | 31d | start no earlier than 2024-11-06 |  |  |  |  |  |

| ID | WBS | Task | Type | Duration | Start | Finish | Predecessors | Complete | Remaining | Total slack | Free slack | Constraint | Resources | Work | Actual work | Cost | Actual cost |
| --- | --- | --- | --- | --- | --- | --- | --- | --- | --- | --- | --- | --- | --- | --- | --- | --- | --- |
| 26 | 1.3.2 | **Documentos de estructura** |  | 21d | 2024-10-10 A | 2024-11-08 |  | 80% | 4.2d |  |  |  |  | 26h | 22h | 1,268 | 1,144 |
| 27 | 1.3.2.1 | Documentación del alcance |  | 15d | 2024-10-10 A | 2024-10-30 A | 5 | 100% |  |  |  | start no earlier than 2024-10-10 | Jefe de proyecto [50%] | 21h | 21h | 1,113 | 1,113 |
| 28 | 1.3.2.2 | Formación |  | 5d | 2024-10-31 A | 2024-11-07 | 11, 27 | 20% | 4d | 9d | 1d |  | Desarrollador full stack - 1; Desarrollador full stack - 2; Desarrollador full stack - 3 | 5h | 1h | 155 | 31 |
| 29 | 1.3.2.3 | Requisitos | milestone | 0d | 2024-10-16 A | 2024-10-16 A |  | 100% |  |  |  | start no earlier than 2024-10-16 |  |  |  |  |  |
| 30 | 1.3.2.4 | Matriz de trazabilidad | milestone | 0d | 2024-10-16 A | 2024-10-16 A |  | 100% |  |  |  | start no earlier than 2024-10-16 |  |  |  |  |  |
| 31 | 1.3.2.5 | EDT | milestone | 0d | 2024-10-23 A | 2024-10-23 A |  | 100% |  |  |  | start no earlier than 2024-10-23 |  |  |  |  |  |
| 32 | 1.3.2.6 | Iniciar diccionario de la EDT | milestone | 0d | 2024-10-23 A | 2024-10-23 A |  | 100% |  |  |  | start no earlier than 2024-10-23 |  |  |  |  |  |
| 33 | 1.3.2.7 | Registro de riesgos | milestone | 0d | 2024-10-30 A | 2024-10-30 A |  | 100% |  |  |  | start no earlier than 2024-10-30 |  |  |  |  |  |
| 34 | 1.3.2.8 | Lista de actividades | milestone | 0d | 2024-10-30 A | 2024-10-30 A |  | 100% |  |  |  | start no earlier than 2024-10-30 |  |  |  |  |  |
| 35 | 1.3.2.9 | Lista de hitos | milestone | 0d | 2024-10-30 A | 2024-10-30 A |  | 100% |  |  |  | start no earlier than 2024-10-30 |  |  |  |  |  |
| 36 | 1.3.2.10 | Cronograma | milestone | 0d | 2024-10-30 A | 2024-10-30 A |  | 100% |  |  |  | start no earlier than 2024-10-30 |  |  |  |  |  |
| 37 | 1.3.2.11 | Matriz de asignación de responsabilidades | milestone | 0d | 2024-11-06 | 2024-11-06 |  |  |  | 31d |  | start no earlier than 2024-11-06 |  |  |  |  |  |
| 38 | 1.3.2.12 | Presupuesto | milestone | 0d | 2024-11-05 | 2024-11-05 |  |  |  | 32d |  | start no earlier than 2024-11-05 |  |  |  |  |  |
| 39 | 1.3.2.13 | Reunión de inicio de ejecución | milestone | 0d | 2024-11-08 | 2024-11-08 |  |  |  | 29d |  | start no earlier than 2024-11-08 |  |  |  |  |  |
| 40 | 1.4 | **Ejecución** |  | 21d? | 2024-11-11 | 2024-12-11 |  |  |  |  |  |  |  | 101h |  | 3,203 |  |
| 41 | 1.4.1 | **Interfaz de usuario** |  | 3d | 2024-11-11 | 2024-11-13 |  |  |  |  |  |  |  | 8h |  | 248 |  |
| 42 | 1.4.1.1 | Página principal |  | 3d | 2024-11-11 | 2024-11-13 | 28 |  |  | 8d | 0d |  | Desarrollador full stack - 1 | 8h |  | 248 |  |
| 43 | 1.4.1.2 | Inicio del desarrollo | milestone | 0d | 2024-11-13 | 2024-11-13 |  |  |  | 3d |  | start no earlier than 2024-11-13 |  |  |  |  |  |
| 44 | 1.4.2 | **Base de datos** |  | 3d | 2024-11-11 | 2024-11-13 |  |  |  |  |  |  |  | 8h |  | 320 |  |
| 45 | 1.4.2.1 | Base de datos |  | 3d | 2024-11-11 | 2024-11-13 | 28 |  |  | 8d | 0d |  | Administrador de bases de datos | 8h |  | 320 |  |
| 46 | 1.4.3 | **Registros** |  | 1d | 2024-11-14 | 2024-11-14 |  |  |  |  |  |  |  | 6h |  | 186 |  |
| 47 | 1.4.3.1 | Registrarse |  | 1d | 2024-11-14 | 2024-11-14 | 45 |  |  | 23d | 11d |  | Desarrollador full stack - 1 | 2h |  | 62 |  |
| 48 | 1.4.3.2 | Iniciar sesión |  | 1d | 2024-11-14 | 2024-11-14 | 45 |  |  | 24d |  |  | Desarrollador full stack - 2 | 2h |  | 62 |  |
| 49 | 1.4.3.3 | Cerrar sesión |  | 1d | 2024-11-14 | 2024-11-14 | 45 |  |  | 24d |  |  | Desarrollador full stack - 3 | 2h |  | 62 |  |

| ID | WBS | Task | Duration | Start | Finish | Predecessors | Total slack | Free slack | Constraint | Resources | Work | Cost |
| --- | --- | --- | --- | --- | --- | --- | --- | --- | --- | --- | --- | --- |
| 50 | 1.4.4 | **Tienda** | 13d? | 2024-11-14 | 2024-12-02 |  |  |  |  |  | 33h | 1,023 |
| 51 | 1.4.4.1 | Catálogo para cliente | 4d | 2024-11-14 | 2024-11-19 | 42, 45 | 8d | 0d |  | Desarrollador full stack - 1; Desarrollador full stack - 2 [50%] | 10h | 310 |
| 52 | 1.4.4.2 | Filtrar por ciudades | 1d | 2024-11-20 | 2024-11-20 | 51 | 20d |  |  | Desarrollador full stack - 2 [50%] | 1h | 31 |
| 53 | 1.4.4.3 | Filtrar por tipo | 1d | 2024-11-20 | 2024-11-20 | 51 | 20d |  |  | Desarrollador full stack - 2 [50%] | 1h | 31 |
| 54 | 1.4.4.4 | Filtrar por precio | 1d | 2024-11-20 | 2024-11-20 | 51 | 20d |  |  | Desarrollador full stack - 3 | 1h | 31 |
| 55 | 1.4.4.5 | Catálogo para administrador | 4d | 2024-11-14 | 2024-11-19 | 42, 45 | 17d | 0d |  | Desarrollador full stack - 3; Desarrollador full stack - 2 [50%] | 10h | 310 |
| 56 | 1.4.4.6 | Organizar catálogo | 1d | 2024-11-20 | 2024-11-20 | 51, 55 | 20d |  |  | Desarrollador full stack - 1 [50%] | 1h | 31 |
| 57 | 1.4.4.7 | Buscador por nombre del curso | 1d | 2024-11-20 | 2024-11-20 | 51, 55 | 20d |  |  | Desarrollador full stack - 1 | 1h | 31 |
| 58 | 1.4.4.8 | Carrito | 4d | 2024-11-27 | 2024-12-02 | 63 | 7d | 0d |  | Desarrollador full stack - 1 | 8h | 248 |
| 59 | 1.4.5 | **Gestión de ventas y reservas** | 11d | 2024-11-21 | 2024-12-05 |  |  |  |  |  | 30h | 930 |
| 60 | 1.4.5.1 | Crear nuevo curso | 2d | 2024-11-27 | 2024-11-28 | 55 | 13d | 1d | start no earlier than 2024-11-27 | Desarrollador full stack - 2 | 2h | 62 |
| 61 | 1.4.5.2 | Editar curso | 1d | 2024-11-29 | 2024-11-29 | 55 | 13d |  | start no earlier than 2024-11-29 | Desarrollador full stack - 3 [50%] | 1h | 31 |
| 62 | 1.4.5.3 | Eliminar curso | 1d | 2024-11-29 | 2024-11-29 | 55 | 13d |  | start no earlier than 2024-11-29 | Desarrollador full stack - 3 [50%] | 1h | 31 |
| 63 | 1.4.5.4 | Información sobre curso para cliente | 4d | 2024-11-21 | 2024-11-26 | 51 | 7d | 0d | start no earlier than 2024-11-21 | Desarrollador full stack - 1; Desarrollador full stack - 2 [50%] | 8h | 248 |
| 64 | 1.4.5.5 | Información sobre curso para administradores | 4d | 2024-11-21 | 2024-11-26 | 55 | 16d |  | start no earlier than 2024-11-21 | Desarrollador full stack - 3; Desarrollador full stack - 2 [50%] | 8h | 248 |
| 65 | 1.4.5.6 | Pago de productos | 3d | 2024-12-03 | 2024-12-05 | 58 | 7d | 0d |  | Desarrollador full stack - 1 | 10h | 310 |
| 66 | 1.4.6 | **Gestión de entrega** | 2d | 2024-12-10 | 2024-12-11 |  |  |  |  |  | 8h | 248 |
| 67 | 1.4.6.1 | Email de confirmación | 2d | 2024-12-10 | 2024-12-11 | 58, 65 | 7d |  |  | Desarrollador full stack - 1 | 5h | 155 |
| 68 | 1.4.6.2 | Seguimiento del pedido | 1d | 2024-12-10 | 2024-12-10 | 58, 65 | 8d |  |  | Desarrollador full stack - 2 | 3h | 93 |
| 69 | 1.4.7 | **Gestión de usuarios** | 1d? | 2024-12-02 | 2024-12-02 |  |  |  |  |  | 8h | 248 |
| 70 | 1.4.7.1 | Perfil de usuario | 1d | 2024-12-02 | 2024-12-02 | 47, 42 | 12d |  | start no earlier than 2024-12-02 | Desarrollador full stack - 3 | 2h | 62 |
| 71 | 1.4.7.2 | Gestión del cliente | 1d | 2024-12-02 | 2024-12-02 | 60 | 12d |  |  | Desarrollador full stack - 3 | 3h | 93 |
| 72 | 1.4.7.3 | Gestión de ventas | 1d | 2024-12-02 | 2024-12-02 | 60 | 12d |  |  | Desarrollador full stack - 3 | 3h | 93 |
| 73 | 1.5 | **Monitoreo y control** | 16d | 2024-11-18 | 2024-12-11 |  |  |  |  |  | 59h | 1,858 |
| 74 | 1.5.1 | **Pruebas** | 16d | 2024-11-18 | 2024-12-11 |  |  |  |  |  | 47h | 1,222 |
| 75 | 1.5.1.1 | Pruebas unitarias | 16d | 2024-11-18 | 2024-12-11 | 43SS | 7d |  | start no earlier than 2024-11-18 | Especialista en pruebas - 1 [33%] | 16h | 416 |
| 76 | 1.5.1.2 | Pruebas de interfaz | 15d | 2024-11-18 | 2024-12-10 | 43SS | 8d |  | start no earlier than 2024-11-18 | Especialista en pruebas - 1 [33%] | 15h | 390 |
| 77 | 1.5.1.3 | Pruebas de integración | 16d | 2024-11-18 | 2024-12-11 | 43SS | 7d |  | start no earlier than 2024-11-18 | Especialista en pruebas - 1 [33%] | 16h | 416 |

| ID | WBS | Task | Type | Duration | Start | Finish | Predecessors | Total slack | Constraint | Resources | Work | Cost |
| --- | --- | --- | --- | --- | --- | --- | --- | --- | --- | --- | --- | --- |
| 78 | 1.5.2 | **Documentación** |  | 16d | 2024-11-18 | 2024-12-11 |  |  |  |  | 12h | 636 |
| 79 | 1.5.2.1 | Documentación del seguimiento y control |  | 16d | 2024-11-18 | 2024-12-11 | 43SS | 0d | start no earlier than 2024-11-18 | Jefe de proyecto | 12h | 636 |
| 80 | 1.5.2.2 | Registro de incidencias | milestone | 0d | 2024-12-04 | 2024-12-04 |  | 11d | start no earlier than 2024-12-04 |  |  |  |
| 81 | 1.5.2.3 | Registro de decisiones | milestone | 0d | 2024-12-04 | 2024-12-04 |  | 11d | start no earlier than 2024-12-04 |  |  |  |
| 82 | 1.5.2.4 | Registro de cambios | milestone | 0d | 2024-12-04 | 2024-12-04 |  | 11d | start no earlier than 2024-12-04 |  |  |  |
| 83 | 1.5.2.5 | Informes de seguimiento | milestone | 0d | 2024-12-04 | 2024-12-04 |  | 11d | start no earlier than 2024-12-04 |  |  |  |
| 84 | 1.5.2.6 | Informes de desempeño | milestone | 0d | 2024-12-04 | 2024-12-04 |  | 11d | start no earlier than 2024-12-04 |  |  |  |
| 85 | 1.5.2.7 | Primera versión de la aplicación | milestone | 0d | 2024-11-20 | 2024-11-20 |  | 21d | start no earlier than 2024-11-20 |  |  |  |
| 86 | 1.5.2.8 | Segunda versión de la aplicación | milestone | 0d | 2024-11-27 | 2024-11-27 |  | 16d | start no earlier than 2024-11-27 |  |  |  |
| 87 | 1.5.2.9 | Tercera versión de la aplicación | milestone | 0d | 2024-12-04 | 2024-12-04 |  | 11d | start no earlier than 2024-12-04 |  |  |  |
| 88 | 1.6 | **Cierre** |  | 7d | 2024-12-12 | 2024-12-20 |  |  |  |  | 28h |  |
| 89 | 1.6.1 | **Informes** |  | 7d | 2024-12-12 | 2024-12-20 |  |  |  |  | 14h |  |
| 90 | 1.6.1.1 | Informe de cierre |  | 7d | 2024-12-12 | 2024-12-20 | 5, 11, 27, 79 | 0d | start no earlier than 2024-12-04 |  | 14h |  |
| 91 | 1.6.1.2 | Informe de cierre | milestone | 0d | 2024-12-12 | 2024-12-12 |  | 7d | start no earlier than 2024-12-12 |  |  |  |
| 92 | 1.6.2 | **Lecciones aprendidas** |  | 7d | 2024-12-12 | 2024-12-20 |  |  |  |  | 14h |  |
| 93 | 1.6.2.1 | Lecciones aprendidas |  | 7d | 2024-12-12 | 2024-12-20 | 5, 11, 27, 79 | 0d |  |  | 14h |  |
| 94 | 1.6.2.2 | Lecciones aprendidas | milestone | 0d | 2024-12-12 | 2024-12-12 |  | 7d | start no earlier than 2024-12-12 |  |  |  |
| 95 | 1.6.3 | Versión final de la aplicación | milestone | 0d | 2024-12-12 | 2024-12-12 |  | 7d | start no earlier than 2024-12-12 |  |  |  |
| 96 | 1.6.4 | Cierre del proyecto | milestone | 0d | 2024-12-20 | 2024-12-20 |  | 1d | start no earlier than 2024-12-20 |  |  |  |
